# Project Plan

Schedule from GanttProject, 2016-01-29 to 2016-04-26.

## Calendars

- Project calendar: Mon-Sun working.

## Resources

| Resource | Group |
| --- | --- |
| Jordan | Developer |
| Jack | Business Analyst/Tester |
| Majid | Tester/Systems Architect |
| Harry | Tester/Business Analyst |
| Carl | Developer |
| Matt | Business Analyst |
| Ibrahim | Systems Architect |
| Ahtif | Developer/Systems Architect |

## Schedule

| ID | WBS | Task | Type | Duration | Start | Finish | Predecessors | Complete | Resources |
| --- | --- | --- | --- | --- | --- | --- | --- | --- | --- |
| 1 | 1 | **Worksheet 1** |  | 11d | 2016-01-29 | 2016-02-08 |  | 94% |  |
| 2 | 1.1 | Initial meeting |  | 1d | 2016-01-29 | 2016-01-29 |  | 100% | Jordan [12.5%]; Jack [12.5%]; Majid [12.5%]; Harry [12.5%]; Carl [12.5%]; Matt [12.5%]; Ibrahim [12.5%]; Ahtif [12.5%] |
| 3 | 1.2 | Project Plan |  | 2d | 2016-02-05 | 2016-02-06 | 4FS+5d | 100% | Jordan [33%]; Jack [33%]; Majid [34%] |
| 4 | 1.3 | Role assignment |  | 1d | 2016-01-30 | 2016-01-30 |  | 100% |  |
| 5 | 1.4 | Role definition |  | 1d | 2016-02-07 | 2016-02-07 | 4FS+7d | 100% | Matt [50%]; Ibrahim [50%] |
| 6 | 1.5 | FDM Interview |  | 1d | 2016-02-02 | 2016-02-02 |  | 100% |  |
| 7 | 1.6 | Minutes of first meeting |  | 1d | 2016-02-06 | 2016-02-06 | 4FS+6d | 100% | Majid [34%]; Harry [33%]; Ahtif [33%] |
| 8 | 1.7 | Use case diagram |  | 2d | 2016-02-05 | 2016-02-06 | 4FS+5d | 100% | Carl |
| 9 | 1.8 | Software architecture and technology rationale |  | 1d | 2016-02-07 | 2016-02-07 | 4FS+7d | 100% | Harry [33%]; Carl [33%]; Ahtif [34%] |
| 10 | 1.9 | Project backlog |  | 3d | 2016-02-03 | 2016-02-05 | 4FS+3d | 100% | Majid [33%]; Harry [34%]; Ahtif [33%] |
| 11 | 1.10 | Risk assessment |  | 2d | 2016-02-06 | 2016-02-07 | 4FS+6d | 100% | Jordan [50%]; Jack [50%] |
| 12 | 1.11 | Project glossary |  | 2d | 2016-02-07 | 2016-02-08 | 3FF, 4FS+7d, 7FF, 8FF, 9FF, 10FF, 11FF | 100% | Carl [20%]; Matt [40%]; Ibrahim [40%] |
| 13 | 1.12 | Presentation - Wiki Pages |  | 1d | 2016-02-08 | 2016-02-08 | 4, 12FF | 100% | Jordan [12.5%]; Jack [12.5%]; Majid [12.5%]; Harry [12.5%]; Carl [12.5%]; Ibrahim [12.5%]; Ahtif [12.5%] |
| 14 | 1.13 | Finalise and submit WS1 | milestone | 0d | 2016-02-09 | 2016-02-09 | 13 |  |  |
| 15 | 2 | **Worksheet 2** |  | 23d | 2016-02-09 | 2016-03-02 | 1 | 90% |  |
| 16 | 2.1 | Meeting to organise worksheet 2 |  | 1d | 2016-02-10 | 2016-02-10 |  | 100% | Jack [12.5%]; Majid [12.5%]; Harry [12.5%]; Carl [12.5%]; Matt [12.5%]; Ibrahim [12.5%]; Ahtif [12.5%] |
| 17 | 2.2 | Minutes |  | 1d | 2016-02-11 | 2016-02-11 | 16 | 100% | Harry [10%] |
| 18 | 2.3 | **Sprint backlog** |  | 3d | 2016-02-09 | 2016-02-11 |  | 100% |  |
| 19 | 2.3.1 | Create Gherkin features |  | 3d | 2016-02-09 | 2016-02-11 |  | 100% | Jordan [80%] |
| 20 | 2.3.2 | Create detailed analysis object model |  | 3d | 2016-02-09 | 2016-02-11 |  | 100% | Harry [80%] |
| 21 | 2.4 | **Detailed software architecture** |  | 2d | 2016-02-09 | 2016-02-10 |  | 100% |  |
| 22 | 2.4.1 | Make the component diagram |  | 2d | 2016-02-09 | 2016-02-10 |  | 100% | Majid [75%] |
| 23 | 2.5 | **Detailed object design** |  | 3d | 2016-02-09 | 2016-02-11 |  | 100% |  |
| 24 | 2.5.1 | Create object design model |  | 3d | 2016-02-09 | 2016-02-11 |  | 100% | Jordan [20%]; Jack [20%]; Majid [10%]; Harry [5%]; Ibrahim [20%] |

| ID | WBS | Task | Type | Duration | Start | Finish | Predecessors | Complete | Resources |
| --- | --- | --- | --- | --- | --- | --- | --- | --- | --- |
| 25 | 2.6 | **Detailed feature specification** |  | 5d | 2016-02-11 | 2016-02-15 |  | 100% |  |
| 26 | 2.6.1 | Access Control |  | 1d | 2016-02-13 | 2016-02-13 |  | 100% | Majid [50%] |
| 27 | 2.6.2 | Register |  | 1d | 2016-02-14 | 2016-02-14 |  | 100% | Majid [50%] |
| 28 | 2.6.3 | Login and Recovery |  | 1d | 2016-02-15 | 2016-02-15 |  | 100% | Majid |
| 29 | 2.6.4 | Profile |  | 1d | 2016-02-11 | 2016-02-11 |  | 100% | Ibrahim [80%] |
| 30 | 2.6.5 | Searching |  | 1d | 2016-02-12 | 2016-02-12 |  | 100% | Ibrahim [50%] |
| 31 | 2.6.6 | Landlord Property Management |  | 1d | 2016-02-13 | 2016-02-13 |  | 100% | Ibrahim |
| 32 | 2.6.7 | Admin Management |  | 1d | 2016-02-14 | 2016-02-14 |  | 100% | Ibrahim |
| 33 | 2.6.8 | User Interaction |  | 1d | 2016-02-15 | 2016-02-15 |  | 100% | Ibrahim |
| 34 | 2.7 | **Project plan** |  | 4d | 2016-02-09 | 2016-02-12 |  | 80% |  |
| 35 | 2.7.1 | Create test plan |  | 1d | 2016-02-11 | 2016-02-11 |  | 100% | Jack [80%] |
| 36 | 2.7.2 | Update Gantt chart for worksheet 2 |  | 1d | 2016-02-09 | 2016-02-09 |  | 100% | Jack [80%] |
| 37 | 2.7.3 | Create configuration management plan |  | 1d | 2016-02-10 | 2016-02-10 |  | 100% | Jack [67.5%] |
| 38 | 2.7.4 | Update Risk Assessment |  | 1d | 2016-02-12 | 2016-02-12 |  | 100% | Jack [50%] |
| 39 | 2.8 | **Prototype source code** |  | 16d | 2016-02-15 | 2016-03-01 | 23, 37FS+1d | 100% |  |
| 40 | 2.8.1 | Registration |  | 7d | 2016-02-15 | 2016-02-21 |  | 100% | Jordan [60%]; Carl [40%] |
| 41 | 2.8.2 | Messaging |  | 6d | 2016-02-20 | 2016-02-25 |  | 100% | Ahtif |
| 42 | 2.8.3 | Add Property Listings |  | 9d | 2016-02-22 | 2016-03-01 |  | 100% | Carl [60%] |
| 43 | 2.9 | **Step definitions** |  | 2d | 2016-02-29 | 2016-03-01 | 25, 39FF | 100% |  |
| 44 | 2.9.1 | Step defs for Access control |  | 2d | 2016-02-29 | 2016-03-01 |  | 100% | Jack [50%]; Majid [50%]; Harry [33%] |
| 45 | 2.9.2 | Step defs for Register |  | 2d | 2016-02-29 | 2016-03-01 |  | 100% | Majid [33%]; Harry [33%] |
| 46 | 2.9.3 | Step defs for Landlord property management |  | 2d | 2016-02-29 | 2016-03-01 |  | 100% | Carl [40%] |
| 47 | 2.9.4 | Step defs for User Interaction |  | 2d | 2016-02-29 | 2016-03-01 |  | 100% | Jordan [50%]; Harry [33%]; Ahtif |
| 48 | 2.10 | Prototype complete | milestone | 0d | 2016-03-02 | 2016-03-02 | 39 |  |  |
| 49 | 2.11 | Testing complete | milestone | 0d | 2016-03-02 | 2016-03-02 | 43 |  |  |
| 50 | 2.12 | Finalise and submit WS2 | milestone | 0d | 2016-03-03 | 2016-03-03 | 18, 21, 23, 25, 34, 48FS+1d |  |  |

| ID | WBS | Task | Duration | Start | Finish | Predecessors |
| --- | --- | --- | --- | --- | --- | --- |
| 51 | 3 | **Worksheet 3** | 53d | 2016-03-04 | 2016-04-25 | 15FS+1d |
| 52 | 3.1 | **Sprint Backlog** | 2d | 2016-03-10 | 2016-03-11 |  |
| 53 | 3.1.1 | Create Gherkin features | 2d | 2016-03-10 | 2016-03-11 |  |
| 54 | 3.1.2 | Create detailed scenarios of features | 2d | 2016-03-10 | 2016-03-11 |  |
| 55 | 3.2 | **Design Documents** | 2d | 2016-03-07 | 2016-03-08 |  |
| 56 | 3.2.1 | Update diagrams | 2d | 2016-03-07 | 2016-03-08 |  |
| 57 | 3.2.2 | Summary of the key design decisions | 1d | 2016-03-08 | 2016-03-08 |  |
| 58 | 3.2.3 | Summary of what was done when designing the application | 1d | 2016-03-08 | 2016-03-08 |  |
| 59 | 3.3 | **Project Plan** | 4d | 2016-03-04 | 2016-03-07 |  |
| 60 | 3.3.1 | Update risk assessment | 1d | 2016-03-07 | 2016-03-07 |  |
| 61 | 3.3.2 | Update Gantt chart | 1d | 2016-03-04 | 2016-03-04 |  |
| 62 | 3.3.3 | Update test plan | 1d | 2016-03-05 | 2016-03-05 |  |
| 63 | 3.3.4 | Update configuration management plan | 1d | 2016-03-06 | 2016-03-06 |  |
| 64 | 3.4 | **Minutes** | 1d | 2016-03-04 | 2016-03-04 |  |
| 65 | 3.4.1 | Write up minutes of initial sprint 2 meeting | 1d | 2016-03-04 | 2016-03-04 |  |
| 66 | 3.5 | **Sprint 1 Retrospective** | 3d | 2016-03-04 | 2016-03-06 |  |
| 67 | 3.5.1 | Discuss Sprint 1 | 1d | 2016-03-04 | 2016-03-04 |  |
| 68 | 3.5.2 | Write up retrospective | 2d | 2016-03-05 | 2016-03-06 |  |
| 69 | 3.6 | **Sprint 2 Retrospective** | 2d | 2016-04-24 | 2016-04-25 |  |
| 70 | 3.6.1 | Write up retrospective | 1d | 2016-04-25 | 2016-04-25 |  |
| 71 | 3.6.2 | Discuss Sprint 2 | 1d | 2016-04-24 | 2016-04-24 |  |
| 72 | 3.7 | **User Manual and Installation Guide** | 3d | 2016-04-11 | 2016-04-13 | 75 |
| 73 | 3.7.1 | Write installation guide | 3d | 2016-04-11 | 2016-04-13 |  |
| 74 | 3.7.2 | Write user manual | 3d | 2016-04-11 | 2016-04-13 |  |

| ID | WBS | Task | Type | Duration | Start | Finish | Predecessors |
| --- | --- | --- | --- | --- | --- | --- | --- |
| 75 | 3.8 | **Source code** |  | 24d | 2016-03-14 | 2016-04-06 | 55 |
| 76 | 3.8.1 | Mapping |  | 10d | 2016-03-19 | 2016-03-28 |  |
| 77 | 3.8.2 | Searching properties |  | 6d | 2016-03-27 | 2016-04-01 |  |
| 78 | 3.8.3 | Implement styling |  | 3d | 2016-04-04 | 2016-04-06 |  |
| 79 | 3.8.4 | Profiles |  | 5d | 2016-03-14 | 2016-03-18 |  |
| 80 | 3.9 | **Automated Testing** |  | 5d | 2016-04-15 | 2016-04-19 | 75FF |
| 81 | 3.9.1 | Implement Step defs for login and recovery |  | 5d | 2016-04-15 | 2016-04-19 |  |
| 82 | 3.9.2 | Implement Step defs for profile |  | 5d | 2016-04-15 | 2016-04-19 |  |
| 83 | 3.9.3 | Implement Step defs for admin management |  | 5d | 2016-04-15 | 2016-04-19 |  |
| 84 | 3.9.4 | Implement Step defs for searching |  | 5d | 2016-04-15 | 2016-04-19 |  |
| 85 | 3.10 | **Individual Essay** |  | 3d | 2016-04-20 | 2016-04-22 |  |
| 86 | 3.10.1 | Communication section |  | 3d | 2016-04-20 | 2016-04-22 |  |
| 87 | 3.10.2 | Teamwork section |  | 3d | 2016-04-20 | 2016-04-22 |  |
| 88 | 3.10.3 | Problem solving section |  | 3d | 2016-04-20 | 2016-04-22 |  |
| 89 | 3.10.4 | Project management section |  | 3d | 2016-04-20 | 2016-04-22 |  |
| 90 | 3.10.5 | Creativity section |  | 3d | 2016-04-20 | 2016-04-22 |  |
| 91 | 3.10.6 | Adaptability section |  | 3d | 2016-04-20 | 2016-04-22 |  |
| 92 | 3.10.7 | Dealing with pressure section |  | 3d | 2016-04-20 | 2016-04-22 |  |
| 93 | 3.11 | Worksheet 3 Submitted | milestone | 0d | 2016-04-26 | 2016-04-26 | 52, 55, 59, 64, 66, 69, 72, 75, 80, 85 |
| 94 | 3.12 | Source code complete | milestone | 0d | 2016-04-07 | 2016-04-07 | 75 |
| 95 | 3.13 | Testing complete | milestone | 0d | 2016-04-20 | 2016-04-20 | 80 |
